# VMTgantt

Schedule from MS Project, 2017-06-05 to 2018-01-05, 5 hours a day, costs in €.

## Calendars

- Standard: Mon-Fri 08:30-13:30; Sat-Sun off. Exceptions (off unless hours are given): 2017-08-15 (Ferragosto), 2017-11-01 (Tutti i Santi), 2017-12-08 (Immacolata Concezione), 2017-12-25 (Natale), 2017-12-26 (S.Stefano), 2018-01-01 (Capodanno).

## Resources

| Resource | Rate |
| --- | --- |
| Angelo Conte | 25 |
| Michele Palumbo | 50 |
| Pietro Cupo | 25 |
| Giacomo Parisi | 25 |
| Simone Sannella | 25 |
| Domenico Turco | 25 |
| Marco Benevenga | 25 |
| Davide Massa | 25 |
| Pasquale Troisi | 25 |

## Schedule

| ID | WBS | Task | Type | Duration | Start | Finish | Predecessors | Total slack | Resources | Work | Cost |
| --- | --- | --- | --- | --- | --- | --- | --- | --- | --- | --- | --- |
| 1 | 1 | **Requirements Elicitation and Analysis** |  | 32d | 2017-06-05 | 2017-07-18 |  | 0d |  | 160h | 4,250 |
| 2 | 1.1 | **Requirements Collection** |  | 21d | 2017-06-05 | 2017-07-03 |  | 0d |  | 105h | 2,750 |
| 3 | 1.1.1 | Actor identification |  | 2d | 2017-06-05 | 2017-06-06 |  | 0d | Pietro Cupo | 10h | 250 |
| 4 | 1.1.2 | Requirements functional and no-functional identification |  | 5d | 2017-06-07 | 2017-06-13 | 3 | 0d | Pietro Cupo | 25h | 625 |
| 5 | 1.1.3 | Rilevant Scenarios identidication |  | 4d | 2017-06-14 | 2017-06-19 | 4 | 0d | Angelo Conte | 20h | 500 |
| 6 | 1.1.4 | Use case |  | 4d | 2017-06-20 | 2017-06-23 | 5 | 0d | Angelo Conte | 20h | 500 |
| 7 | 1.1.5 | Mockup |  | 4d | 2017-06-26 | 2017-06-29 | 6 | 0d | Marco Benevenga | 20h | 500 |
| 8 | 1.1.6 | Revision Requirements Collection |  | 1d | 2017-06-30 | 2017-06-30 | 7, 6, 5, 4, 3 | 0d | Angelo Conte | 5h | 125 |
| 9 | 1.1.7 | Assembly RAD draft e supervision |  | 1d | 2017-07-03 | 2017-07-03 | 8, 7, 6, 5, 4, 3 | 0d | Michele Palumbo | 5h | 250 |
| 10 | M1 | Release RAD Draft | milestone | 0d | 2017-07-03 | 2017-07-03 | 9 | 0d |  |  |  |
| 11 | 1.2 | **Requirements Analysys** |  | 11d | 2017-07-04 | 2017-07-18 |  | 0d |  | 55h | 1,500 |
| 12 | 1.2.1 | Sequence Diagram |  | 3d | 2017-07-04 | 2017-07-06 | 10 | 0d | Pietro Cupo | 15h | 375 |
| 13 | 1.2.2 | Class Diagram |  | 3d | 2017-07-07 | 2017-07-11 | 12 | 0d | Pietro Cupo | 15h | 375 |
| 14 | 1.2.3 | Status Diagram |  | 3d | 2017-07-12 | 2017-07-14 | 13 | 0d | Angelo Conte | 15h | 375 |
| 15 | 1.2.4 | Revision Requirements Collection |  | 1d | 2017-07-17 | 2017-07-17 | 14, 13, 12 | 0d | Angelo Conte | 5h | 125 |
| 16 | 1.2.5 | Assembly RAD and supervision |  | 1d | 2017-07-18 | 2017-07-18 | 15, 14, 13, 12 | 0d | Michele Palumbo | 5h | 250 |
| 17 | M2 | Release RAD | milestone | 0d | 2017-07-18 | 2017-07-18 | 16 | 0d |  |  |  |
| 18 | 2 | **System Design** |  | 16d | 2017-07-19 | 2017-08-09 |  | 0d |  | 80h | 2,125 |
| 19 | 2.1 | Design Goals identification |  | 2d | 2017-07-19 | 2017-07-20 | 17 | 0d | Simone Sannella | 10h | 250 |
| 20 | 2.2 | Architecture identification |  | 3d | 2017-07-21 | 2017-07-25 | 19 | 0d | Domenico Turco | 15h | 375 |
| 21 | 2.3 | Sub-system identification |  | 3d | 2017-07-26 | 2017-07-28 | 20 | 0d | Domenico Turco | 15h | 375 |
| 22 | 2.4 | Persistent Data identification |  | 2d | 2017-07-31 | 2017-08-01 | 21 | 0d | Simone Sannella | 10h | 250 |
| 23 | 2.5 | Services identification |  | 2d | 2017-08-02 | 2017-08-03 | 22 | 0d | Simone Sannella | 10h | 250 |
| 24 | 2.6 | Limit case identification |  | 2d | 2017-08-04 | 2017-08-07 | 23 | 0d | Pietro Cupo | 10h | 250 |
| 25 | 2.7 | Revision System Design |  | 1d | 2017-08-08 | 2017-08-08 | 24, 23, 22, 21, 20, 19 | 0d | Angelo Conte | 5h | 125 |
| 26 | 2.8 | Assemblay SDD and supervision |  | 1d | 2017-08-09 | 2017-08-09 | 25, 24, 23, 22, 21, 20, 19 | 0d | Michele Palumbo | 5h | 250 |
| 27 | M3 | Consegna SDD | milestone | 0d | 2017-08-09 | 2017-08-09 | 26 | 0d |  |  |  |

| ID | WBS | Task | Type | Duration | Start | Finish | Predecessors | Total slack | Resources | Work | Cost |
| --- | --- | --- | --- | --- | --- | --- | --- | --- | --- | --- | --- |
| 28 | 3 | **Object Design** |  | 16d | 2017-08-10 | 2017-09-01 |  | 0d |  | 80h | 2,125 |
| 29 | 3.1 | Trade-Offs identification |  | 2d | 2017-08-10 | 2017-08-11 | 27 | 0d | Giacomo Parisi | 10h | 250 |
| 30 | 3.2 | Package Subdivision |  | 4d | 2017-08-14 | 2017-08-18 | 29 | 0d | Giacomo Parisi | 20h | 500 |
| 31 | 3.3 | **Tecnical reuse identification** |  | 8d | 2017-08-21 | 2017-08-30 |  | 0d |  | 40h | 1,000 |
| 32 | 3.3.1 | Design Pattern identification |  | 4d | 2017-08-21 | 2017-08-24 | 30 | 0d | Simone Sannella | 20h | 500 |
| 33 | 3.3.2 | Off-The-Shelf component identification |  | 4d | 2017-08-25 | 2017-08-30 | 32 | 0d | Domenico Turco | 20h | 500 |
| 34 | 3.4 | Revision Object Design |  | 1d | 2017-08-31 | 2017-08-31 | 33, 32, 30, 29 | 0d | Angelo Conte | 5h | 125 |
| 35 | 3.5 | Assembly ODD and supervision |  | 1d | 2017-09-01 | 2017-09-01 | 34, 33, 32, 30, 29 | 0d | Michele Palumbo | 5h | 250 |
| 36 | M4 | Release ODD | milestone | 0d | 2017-09-01 | 2017-09-01 | 35 | 0d |  |  |  |
| 37 | 4 | **Implementation** |  | 46d | 2017-09-04 | 2017-11-07 |  | 0d |  | 230h | 5,875 |
| 38 | 4.1 | GUI(Front-End-App) develop |  | 10d | 2017-09-04 | 2017-09-15 | 36 | 0d | Davide Massa [50%]; Marco Benevenga [50%] | 50h | 1,250 |
| 39 | 4.2 | Component interface Develop DB(Back-end-App) |  | 4d | 2017-09-18 | 2017-09-21 | 38 | 0d | Giacomo Parisi | 20h | 500 |
| 40 | 4.3 | Module GPS Develop |  | 5d | 2017-09-22 | 2017-09-28 | 39 | 0d | Davide Massa | 25h | 625 |
| 41 | 4.4 | Code Develop |  | 21d | 2017-09-29 | 2017-10-27 | 40 | 0d | Davide Massa [25%]; Domenico Turco [25%]; Marco Benevenga [28.6%]; Simone Sannella [25%] | 105h | 2,625 |
| 42 | 4.5 | Code Optimization |  | 5d | 2017-10-30 | 2017-11-06 | 41 | 0d | Giacomo Parisi | 25h | 625 |
| 43 | 4.6 | Write implementation Document |  | 1d | 2017-11-07 | 2017-11-07 | 42, 41, 40, 39, 38 | 0d | Michele Palumbo | 5h | 250 |
| 44 | M5 | Release implementation Document | milestone | 0d | 2017-11-07 | 2017-11-07 | 43 | 0d |  |  |  |
| 45 | 5 | **Testing** |  | 16d | 2017-11-08 | 2017-11-29 |  | 0d |  | 80h | 2,125 |
| 46 | 5.1 | Unit Test |  | 5d | 2017-11-08 | 2017-11-14 | 44 | 0d | Pasquale Troisi | 25h | 625 |
| 47 | 5.2 | Integration Testing |  | 3d | 2017-11-15 | 2017-11-17 | 46 | 0d | Pasquale Troisi | 15h | 375 |
| 48 | 5.3 | Functional Testing |  | 3d | 2017-11-20 | 2017-11-22 | 47 | 0d | Pasquale Troisi | 15h | 375 |
| 49 | 5.4 | Usability Testing |  | 4d | 2017-11-23 | 2017-11-28 | 48 | 0d | Pasquale Troisi | 20h | 500 |
| 50 | 5.5 | Write Test Document |  | 1d | 2017-11-29 | 2017-11-29 | 49, 48, 47, 46 | 0d | Michele Palumbo | 5h | 250 |
| 51 | M6 | Release Test Document | milestone | 0d | 2017-11-29 | 2017-11-29 | 50 | 0d |  |  |  |

| ID | WBS | Task | Type | Duration | Start | Finish | Predecessors | Total slack | Resources | Work | Cost |
| --- | --- | --- | --- | --- | --- | --- | --- | --- | --- | --- | --- |
| 52 | 6 | **Release** |  | 23d | 2017-11-30 | 2018-01-05 |  | 0d |  | 30h | 1,500 |
| 53 | 6.1 | User Manual |  | 2d | 2017-11-30 | 2017-12-01 | 51 | 0d | Michele Palumbo | 10h | 500 |
| 54 | 6.2 | **Alpha version** |  | 2d | 2017-12-04 | 2017-12-05 |  | 0d |  | 10h | 500 |
| 55 | 6.2.1 | Alpha version Preparation |  | 1d | 2017-12-04 | 2017-12-04 | 53 | 0d | Michele Palumbo | 5h | 250 |
| 56 | 6.2.2 | Manual Preparation |  | 1d | 2017-12-05 | 2017-12-05 | 55, 53 | 0d | Michele Palumbo | 5h | 250 |
| 57 | M7 | Release Alpha version + User Manual | milestone | 0d | 2017-12-05 | 2017-12-05 | 56 | 0d |  |  |  |
| 58 | 6.3 | Alpha Testing |  | 7d | 2017-12-06 | 2017-12-15 | 57 | 0d |  |  |  |
| 59 | 6.4 | **Beta version** |  | 1d | 2017-12-18 | 2017-12-18 |  | 0d |  | 5h | 250 |
| 60 | 6.4.1 | Beta version Preparation |  | 1d | 2017-12-18 | 2017-12-18 | 58 | 0d | Michele Palumbo | 5h | 250 |
| 61 | M8 | Release Beta version | milestone | 0d | 2017-12-18 | 2017-12-18 | 60 | 0d |  |  |  |
| 62 | 6.5 | Beta Testing |  | 10d | 2017-12-19 | 2018-01-04 | 61 | 0d |  |  |  |
| 63 | 6.6 | **Final App Version** |  | 1d | 2018-01-05 | 2018-01-05 |  | 0d |  | 5h | 250 |
| 64 | 6.6.1 | Final version preparation |  | 1d | 2018-01-05 | 2018-01-05 | 62 | 0d | Michele Palumbo | 5h | 250 |
| 65 | M9 | Launch of the application "Virtual Museum Tour" | milestone | 0d | 2018-01-05 | 2018-01-05 | 64 | 0d |  |  |  |
